# MGM Palo to Cisco: Actionable program (working plan)

Schedule from MS Project XML, 2026-04-28 to 2026-04-28.
Synthesizes action log + executive plan. Baseline with Cisco PM/Ops.

## Calendars

- Standard: Mon-Fri 08:00-12:00, 13:00-17:00; Sat-Sun off.

## Resources

| Resource |
| --- |
| MGM program lead |
| Cisco (PM/engineering) |
| Technologent (physical) |
| MGM net/sec/ops |
| MGM apps/owners |
| MGM cyber/SOC |

## Schedule

| ID | WBS | Task | Type | Duration | Start | Finish | Predecessors |
| --- | --- | --- | --- | --- | --- | --- | --- |
| 1 | 1 | **A. Technical discovery & readiness** |  | 0d | 2026-04-28 | 2026-04-28 |  |
| 2 | 1.1 | SCC: MGM access, demo/ordering, activation |  | 3d | 2026-04-28 | 2026-04-28 | 1 |
| 3 | 1.2 | VPN: crypto alignment + ~19-tunnel review (owners assigned) |  | 5d | 2026-04-28 | 2026-04-28 | 1 |
| 4 | 1.3 | Joint: critical app list + validation test plan |  | 5d | 2026-04-28 | 2026-04-28 | 1 |
| 5 | 1.4 | Site survey firewall priority to Technologent (update w/ FMT) |  | 2d | 2026-04-28 | 2026-04-28 | 1 |
| 6 | 1.5 | Complete low-level diagrams for in-scope firewalls |  | 5d | 2026-04-28 | 2026-04-28 | 1 |
| 7 | 1.6 | Assemble program documentation (e.g. Jason, Mani) |  | 3d | 2026-04-28 | 2026-04-28 | 1 |
| 8 | 1.7 | Second weekly technical call + name net/sec participants |  | 2d | 2026-04-28 | 2026-04-28 | 1 |
| 9 | 1.8 | NetScout TAPs: align w/ PM/BU/field (e.g. Phil Miller, Srikanth) |  | 4d | 2026-04-28 | 2026-04-28 | 1 |
| 10 | 1.9 | Run exports through FMT; document gaps/risks |  | 10d | 2026-04-28 | 2026-04-28 | 1 |
| 11 | 1.10 | Schedule basic FTD/FMC operations training |  | 2d | 2026-04-28 | 2026-04-28 | 1 |
| 12 | 1.11 | Credential prep list + handoff per MGM policy (AD, TACACS, etc.) |  | 2d | 2026-04-28 | 2026-04-28 | 1 |
| 13 | 1.12 | Pre/post check scripts: sessions, latency, owners (Cisco+MGM agreed) |  | 3d | 2026-04-28 | 2026-04-28 | 1 |
| 14 | 1.13 | Clarify User-ID / AD / VM (regionals, LV data centers) |  | 3d | 2026-04-28 | 2026-04-28 | 1 |
| 15 | 1.14 | Mandalay Bay: validate site-survey data completeness w/ Technologent |  | 2d | 2026-04-28 | 2026-04-28 | 1 |
| 16 | 1.15 | Propose + approve migrations per week (ops capacity / CAB) |  | 3d | 2026-04-28 | 2026-04-28 | 1 |
| 17 | 1.16 | FMC: v10/upgrade path, mgmt IP for 4600s, Nexar/hostname inputs |  | 5d | 2026-04-28 | 2026-04-28 | 1 |
| 18 | 1.17 | Begin AD + RADIUS integration in lab/FMC (early, where possible) |  | 8d | 2026-04-28 | 2026-04-28 | 1 |
| 19 | 1.18 | Send VM integration document pack to Mo Baker / cyber |  | 2d | 2026-04-28 | 2026-04-28 | 1 |
| 20 | 1.19 | AD + RADIUS sessions — calendar and required attendees |  | 2d | 2026-04-28 | 2026-04-28 | 1 |
| 21 | 1.20 | Log/SIEM ingestion path — align w/ Ryan Palmer / security |  | 4d | 2026-04-28 | 2026-04-28 | 1 |
| 22 | 1.21 | Define export/refresh of XML for migration test cycles |  | 2d | 2026-04-28 | 2026-04-28 | 1 |
| 23 | 1.22 | SCC: test account with FMC, confirm product/license activation |  | 2d | 2026-04-28 | 2026-04-28 | 1 |
| 24 | 1.23 | Threat intel: session w/ Jose (licensing, integrations) |  | 1d | 2026-04-28 | 2026-04-28 | 1 |
| 25 | 1.24 | Palo lab review — nuances feeding MOP/CRD |  | 5d | 2026-04-28 | 2026-04-28 | 1 |
| 26 | 1.25 | Top parallel task list w/ program lead (pick-up items) |  | 2d | 2026-04-28 | 2026-04-28 | 1 |
| 27 | 1.26 | CRD: draft, route, approve (governance record) |  | 3d | 2026-04-28 | 2026-04-28 | 1 |
| 28 | 1.27 | GATE: Discovery + FMT + app plan + CRD (pilot go) | milestone | 0d | 2026-04-28 | 2026-04-28 | 10, 4, 27, 1 |

Notes:
- 28: Adjust predecessors in Project if your IDs differ.

| ID | WBS | Task | Type | Duration | Start | Finish | Predecessors |
| --- | --- | --- | --- | --- | --- | --- | --- |
| 29 | 2 | **B. Engineering, MOP, and physical handoffs** |  | 0d | 2026-04-28 | 2026-04-28 |  |
| 30 | 2.1 | Apply lab upgrades + clean AD/realm/RADIUS in FMC/FTD build |  | 5d | 2026-04-28 | 2026-04-28 | 29, 28, 18 |
| 31 | 2.2 | Publish MOP, rollback, VPN 420/421 in SharePoint |  | 4d | 2026-04-28 | 2026-04-28 | 29, 10, 4, 28 |
| 32 | 2.3 | Technologent: rack/position + site survey outputs to Nexar/hostname |  | 3d | 2026-04-28 | 2026-04-28 | 29, 15, 1 |
| 33 | 2.4 | GATE: MOP + physical/hostname data ready to schedule pilot | milestone | 0d | 2026-04-28 | 2026-04-28 | 30, 31, 32, 28 |
| 34 | 3 | **C. Pilot (first in-scope property name TBD)** |  | 0d | 2026-04-28 | 2026-04-28 |  |
| 35 | 3.1 | Validate L1/L2, register to FMC, load migration build |  | 5d | 2026-04-28 | 2026-04-28 | 34, 33, 1 |
| 36 | 3.2 | 5–10 day config freeze + comms to stakeholders |  | 7d | 2026-04-28 | 2026-04-28 | 35 |
| 37 | 3.3 | During freeze: FMT/parity, manual fix, signed readiness for window |  | 7d | 2026-04-28 | 2026-04-28 | 36, 10 |
| 38 | 3.4 | Migration window: execute MOP, apps on-call, validate |  | 2d | 2026-04-28 | 2026-04-28 | 37, 31, 28 |
| 39 | 3.5 | Stabilize + high-touch, failover test, hotwash |  | 5d | 2026-04-28 | 2026-04-28 | 38 |
| 40 | 3.6 | GATE: pilot approved to begin waves | milestone | 0d | 2026-04-28 | 2026-04-28 | 39, 28, 4 |
| 41 | 4 | **D. Program waves to finish the estate** |  | 0d | 2026-04-28 | 2026-04-28 |  |
| 42 | 4.1 | Wave schedule + resourcing: Cisco, Technologent, MGM, apps |  | 5d | 2026-04-28 | 2026-04-28 | 41, 16, 40 |
| 43 | 4.2 | Execute remaining CAB windows / sites (placeholder length) |  | 60d | 2026-04-28 | 2026-04-28 | 42, 40 |
| 44 | 4.3 | GATE: migration complete — Palo decommissioned in scope | milestone | 0d | 2026-04-28 | 2026-04-28 | 43, 1 |
| 45 | 5 | **E. Program close, KT, lifecycle (Day-2)** |  | 0d | 2026-04-28 | 2026-04-28 |  |
| 46 | 5.1 | As-builts, handover, lifecycle adoption touchpoints |  | 10d | 2026-04-28 | 2026-04-28 | 45, 44 |
| 47 | 5.2 | GATE: program close / benefits | milestone | 0d | 2026-04-28 | 2026-04-28 | 46 |

Notes:
- 29: Overlaps late discovery; tracks execution from action list.
- 30: UID 18 = early AD/RADIUS in lab (1.17).
- 31: UIDs 10=FMT (1.9), 4=critical apps (1.3).
- 32: UID 15 = Mandalay survey validation (1.14).
- 35: Per PRELIMINARY plan: physical + registration first.
- 36: No ad-hoc PA changes; refresh exports before freeze as needed.
- 37: UID 10 = FMT (1.9).
- 38: Replace with formal MOP; gate = discovery/CRD.
- 40: 4 = 1.3 app plan; prove pilot success before scale
- 42: 16 = 1.15 (migrations/week) — edit as needed
- 43: Tie to approved calendar; 60d is placeholder only.
- 44: Commercial true-down follows contract.
- 46: Training + runbooks; SIEM/ops as agreed
